# ProjetSess5_

Schedule from MS Project, 2014-11-10 to 2014-12-11, status date 2014-11-28, 7 hours a day, A marks actual dates.

## Calendars

- Standard: Mon-Fri 08:00-12:00, 13:00-18:00; Sat-Sun off.

## Resources

| Resource |
| --- |
| Louis-Normand |
| Vincent |
| Gabriel |
| Hicham |

## Schedule

| ID | WBS | Task | Type | Duration | Start | Finish | Predecessors | Complete | Remaining | Total slack | Free slack | Constraint | Resources | Work | Actual work |
| --- | --- | --- | --- | --- | --- | --- | --- | --- | --- | --- | --- | --- | --- | --- | --- |
| 1 | 1 | **Projet de la 5e session** |  | 30.71d | 2014-11-10 A | 2014-12-11 |  | 46% | 16.72d | 0d |  |  |  | 770h | 259h |
| 2 | 1.1 | Début du projet | milestone | 0d | 2014-11-10 | 2014-11-10 |  |  |  | 28.71d | 28.29d | start no earlier than 2014-11-10 |  |  |  |
| 3 | 1.2 | **Semaine 1** |  | 5d | 2014-11-10 A | 2014-11-13 A |  | 100% |  |  |  |  |  | 140h | 140h |
| 4 | 1.2.1 | **Interface PC (#1)** |  | 5d | 2014-11-10 A | 2014-11-13 A |  | 100% |  |  |  |  |  | 35h | 35h |
| 5 | 1.2.1.1 | Communication CAN |  | 1d | 2014-11-10 A | 2014-11-10 A | 2 | 100% |  |  |  |  | Vincent | 7h | 7h |
| 6 | 1.2.1.2 | Communication série |  | 1d | 2014-11-10 A | 2014-11-11 A | 5 | 100% |  |  |  |  | Vincent | 7h | 7h |
| 7 | 1.2.1.3 | Heartbeats |  | 1d | 2014-11-11 A | 2014-11-12 A | 6 | 100% |  |  |  |  | Vincent | 7h | 7h |
| 8 | 1.2.1.4 | Historique |  | 1d | 2014-11-12 A | 2014-11-13 A | 7 | 100% |  |  |  |  | Vincent | 7h | 7h |
| 9 | 1.2.1.5 | Interface usager |  | 0.5d | 2014-11-13 A | 2014-11-13 A | 8 | 100% |  |  |  |  | Vincent | 3.5h | 3.5h |
| 10 | 1.2.1.6 | Date & heure |  | 0.5d | 2014-11-13 A | 2014-11-13 A | 9 | 100% |  |  |  |  | Vincent | 3.5h | 3.5h |
| 11 | 1.2.2 | **Véhicule & station 1 (#2)** |  | 5d | 2014-11-10 A | 2014-11-13 A |  | 100% |  |  |  |  |  | 35h | 35h |
| 12 | 1.2.2.1 | Planification |  | 1d | 2014-11-10 A | 2014-11-10 A | 2 | 100% |  |  |  |  | Louis-Normand | 7h | 7h |
| 13 | 1.2.2.2 | Montage |  | 1d | 2014-11-10 A | 2014-11-11 A | 12 | 100% |  |  |  |  | Louis-Normand | 7h | 7h |
| 14 | 1.2.2.3 | Vérification du matériel |  | 0.2d | 2014-11-11 A | 2014-11-11 A | 13 | 100% |  |  |  |  | Louis-Normand | 1.4h | 1.4h |
| 15 | 1.2.2.4 | Arrêt |  | 0.8d | 2014-11-12 A | 2014-11-13 A | 16 | 100% |  |  |  |  | Louis-Normand | 5.6h | 5.6h |
| 16 | 1.2.2.5 | Suivie de la ligne |  | 1d | 2014-11-11 A | 2014-11-12 A | 14 | 100% |  |  |  |  | Louis-Normand | 7h | 7h |
| 17 | 1.2.2.6 | Transposition des fonctions |  | 1d | 2014-11-13 A | 2014-11-13 A | 15 | 100% |  |  |  |  | Louis-Normand | 7h | 7h |
| 18 | 1.2.3 | **Festo (#3)** |  | 5d | 2014-11-10 A | 2014-11-13 A |  | 100% |  |  |  |  |  | 35h | 35h |
| 19 | 1.2.3.1 | Montage |  | 1d | 2014-11-10 A | 2014-11-10 A | 2 | 100% |  |  |  |  | Gabriel | 7h | 7h |
| 20 | 1.2.3.2 | Test des I/O de la table |  | 1d | 2014-11-10 A | 2014-11-11 A | 19 | 100% |  |  |  |  | Gabriel | 7h | 7h |
| 21 | 1.2.3.3 | Circuit prototype |  | 1d | 2014-11-11 A | 2014-11-12 A | 20 | 100% |  |  |  |  | Gabriel | 7h | 7h |
| 22 | 1.2.3.4 | Schématisation |  | 1d | 2014-11-12 A | 2014-11-13 A | 21 | 100% |  |  |  |  | Gabriel | 7h | 7h |
| 23 | 1.2.3.5 | Contrôle des I/O du moteur |  | 1d | 2014-11-13 A | 2014-11-13 A | 22 | 100% |  |  |  |  | Gabriel | 7h | 7h |
| 24 | 1.2.4 | **SOC8200 (#4)** |  | 5d | 2014-11-10 A | 2014-11-13 A |  | 100% |  |  |  |  |  | 35h | 35h |
| 25 | 1.2.4.1 | Communication CAN |  | 1d | 2014-11-10 A | 2014-11-10 A | 2 | 100% |  |  |  |  | Hicham | 7h | 7h |
| 26 | 1.2.4.2 | Communication série |  | 1d | 2014-11-10 A | 2014-11-11 A | 25 | 100% |  |  |  |  | Hicham | 7h | 7h |
| 27 | 1.2.4.3 | Heartbeats |  | 1d | 2014-11-11 A | 2014-11-12 A | 26 | 100% |  |  |  |  | Hicham | 7h | 7h |
| 28 | 1.2.4.4 | Datalog |  | 1d | 2014-11-12 A | 2014-11-13 A | 27 | 100% |  |  |  |  | Hicham | 7h | 7h |
| 29 | 1.2.4.5 | Affichage des données |  | 1d | 2014-11-13 A | 2014-11-13 A | 28 | 100% |  |  |  |  | Hicham | 7h | 7h |

| ID | WBS | Task | Duration | Start | Finish | Predecessors | Complete | Remaining | Total slack | Free slack | Resources | Work | Actual work |
| --- | --- | --- | --- | --- | --- | --- | --- | --- | --- | --- | --- | --- | --- |
| 30 | 1.3 | **Semaine 2** | 5d | 2014-11-17 A | 2014-11-20 |  | 93% | 0.33d |  |  |  | 112h | 105h |
| 31 | 1.3.1 | **Véhicule & station 1 (#2)** | 5d | 2014-11-17 A | 2014-11-20 |  | 80% | 1d | 0d |  |  | 35h | 28h |
| 32 | 1.3.1.1 | Intégration I2C | 2d | 2014-11-17 A | 2014-11-18 A | 17 | 100% |  |  |  | Vincent | 14h | 14h |
| 33 | 1.3.1.2 | Communication | 2d | 2014-11-18 A | 2014-11-20 A | 32 | 100% |  |  |  | Vincent | 14h | 14h |
| 34 | 1.3.1.3 | Sens de rotation | 1d | 2014-11-20 | 2014-11-20 | 33 |  |  | 0d |  | Vincent | 7h |  |
| 35 | 1.3.2 | **Festo (#3)** | 5d | 2014-11-17 A | 2014-11-20 A |  | 100% |  |  |  |  | 35h | 35h |
| 36 | 1.3.2.1 | PCB | 2d | 2014-11-17 A | 2014-11-18 A | 23 | 100% |  |  |  | Louis-Normand | 14h | 14h |
| 37 | 1.3.2.2 | Programmation de la drive | 1d | 2014-11-18 A | 2014-11-19 A | 36 | 100% |  |  |  | Louis-Normand | 7h | 7h |
| 38 | 1.3.2.3 | Montage de la carte multi-I/O | 1d | 2014-11-19 A | 2014-11-20 A | 37 | 100% |  |  |  | Louis-Normand | 7h | 7h |
| 39 | 1.3.2.4 | Interfaçage de la carte multi-I/O | 1d | 2014-11-20 A | 2014-11-20 A | 38 | 100% |  |  |  | Louis-Normand | 7h | 7h |
| 40 | 1.3.3 | **SOC8200 & PIC (#4)** | 5d | 2014-11-17 A | 2014-11-20 A |  | 100% |  |  |  |  | 42h | 42h |
| 41 | 1.3.3.1 | Communication série PIC | 1d | 2014-11-17 A | 2014-11-17 A | 29 | 100% |  |  |  | Gabriel; Hicham | 14h | 14h |
| 42 | 1.3.3.2 | Communication CAN PIC | 1d | 2014-11-17 A | 2014-11-18 A | 41 | 100% |  |  |  | Gabriel; Hicham | 7h | 7h |
| 43 | 1.3.3.3 | Lecture de la balance | 1d | 2014-11-18 A | 2014-11-19 A | 42 | 100% |  |  |  | Gabriel; Hicham | 7h | 7h |
| 44 | 1.3.3.4 | Transmission de la trame CAN PIC | 1d | 2014-11-19 A | 2014-11-20 A | 43 | 100% |  |  |  | Gabriel; Hicham | 7h | 7h |
| 45 | 1.3.3.5 | Temporisation (Horloge SPI) | 1d | 2014-11-20 A | 2014-11-20 A | 44 | 100% |  |  |  | Gabriel; Hicham | 7h | 7h |
| 46 | 1.4 | **Semaine 3** | 5d | 2014-11-24 A | 2014-11-27 |  | 13% | 4.33d |  |  |  | 105h | 14h |
| 47 | 1.4.1 | **Interface PC (#1)** | 2d | 2014-11-24 | 2014-11-25 |  |  |  | 3d |  |  | 14h |  |
| 48 | 1.4.1.1 | Gestion des blocs | 1d | 2014-11-24 | 2014-11-24 | 39 |  |  | 3d | 0d | Gabriel | 7h |  |
| 49 | 1.4.1.2 | Gestion des exceptions | 1d | 2014-11-24 | 2014-11-25 | 48 |  |  | 3d |  | Gabriel | 7h |  |
| 50 | 1.4.2 | **Véhicule & station 1 (#2)** | 3d | 2014-11-24 A | 2014-11-26 |  | 67% | 1d | 2d |  |  | 21h | 14h |
| 51 | 1.4.2.1 | Communication sans-fil | 1d | 2014-11-24 A | 2014-11-24 A | 34 | 100% |  |  |  | Hicham | 7h | 7h |
| 52 | 1.4.2.2 | Communication CAN | 1d | 2014-11-24 A | 2014-11-25 A | 51 | 100% |  |  |  | Hicham | 7h | 7h |
| 53 | 1.4.2.3 | Gestion des données | 1d | 2014-11-25 | 2014-11-26 | 52 |  |  | 2d |  | Hicham | 7h |  |

| ID | WBS | Task | Duration | Start | Finish | Predecessors | Total slack | Free slack | Resources | Work |
| --- | --- | --- | --- | --- | --- | --- | --- | --- | --- | --- |
| 54 | 1.4.3 | **Festo (#3)** | 5d | 2014-11-24 | 2014-11-27 |  | 0d |  |  | 35h |
| 55 | 1.4.3.1 | Communication Xbee | 1d | 2014-11-24 | 2014-11-24 | 39 | 0d |  | Vincent | 7h |
| 56 | 1.4.3.2 | Commandes PC | 1d | 2014-11-24 | 2014-11-25 | 55 | 0d |  | Vincent | 7h |
| 57 | 1.4.3.3 | Identification de la cargaison | 1d | 2014-11-25 | 2014-11-26 | 56 | 0d |  | Vincent | 7h |
| 58 | 1.4.3.4 | Traitement et transfert des cargaisons | 2d | 2014-11-26 | 2014-11-27 | 57 | 0d |  | Vincent | 14h |
| 59 | 1.4.4 | **SOC8200 & PIC (#4)** | 5d | 2014-11-24 | 2014-11-27 |  | 0d |  |  | 35h |
| 60 | 1.4.4.1 | Entrées et sorties (Mode passif) | 2d | 2014-11-24 | 2014-11-25 | 45 | 0d |  | Louis-Normand | 14h |
| 61 | 1.4.4.2 | Gestion du système (Mode actif) | 3d | 2014-11-25 | 2014-11-27 | 60 | 0d |  | Louis-Normand | 21h |
| 62 | 1.5 | **Semaine 4** | 5d | 2014-12-01 | 2014-12-04 |  |  |  |  | 133h |
| 63 | 1.5.1 | **Interface PC (#1)** | 4d | 2014-12-01 | 2014-12-04 |  | 1d |  |  | 28h |
| 64 | 1.5.1.1 | Réception données véhicule | 1d | 2014-12-01 | 2014-12-01 | 51 | 1d | 0d | Louis-Normand | 7h |
| 65 | 1.5.1.2 | Contrôle du véhicule | 2d | 2014-12-01 | 2014-12-03 | 64 | 1d | 0d | Louis-Normand | 14h |
| 66 | 1.5.1.3 | Image graphique de la piste | 1d | 2014-12-03 | 2014-12-04 | 65 | 1d |  | Louis-Normand | 7h |
| 67 | 1.5.2 | **Véhicule & station 1 (#2)** | 5d | 2014-12-01 | 2014-12-04 |  | 0d |  |  | 35h |
| 68 | 1.5.2.1 | No du véhicule | 1d | 2014-12-01 | 2014-12-01 | 53 | 0d |  | Gabriel | 7h |
| 69 | 1.5.2.2 | Gestion de l'heure | 1d | 2014-12-01 | 2014-12-02 | 68 | 0d |  | Gabriel | 7h |
| 70 | 1.5.2.3 | Sens d'arrivée | 2d | 2014-12-02 | 2014-12-04 | 69 | 0d |  | Gabriel | 14h |
| 71 | 1.5.2.4 | Gestion des feux de circulation | 1d | 2014-12-04 | 2014-12-04 | 70 | 0d |  | Gabriel | 7h |
| 72 | 1.5.3 | **Festo (#3)** | 5d | 2014-12-01 | 2014-12-04 |  | 0d |  |  | 35h |
| 73 | 1.5.3.1 | Interface triac | 2d | 2014-12-01 | 2014-12-02 | 58 | 0d |  | Hicham | 14h |
| 74 | 1.5.3.2 | Chute des blocs | 3d | 2014-12-02 | 2014-12-04 | 73 | 0d |  | Hicham | 21h |
| 75 | 1.5.4 | **SOC8200 & PIC (#4)** | 5d | 2014-12-01 | 2014-12-04 |  | 0d |  |  | 35h |
| 76 | 1.5.4.1 | Débogage | 5d | 2014-12-01 | 2014-12-04 | 61 | 0d |  | Vincent | 35h |
| 77 | 1.6 | **Semaine 5** | 5d | 2014-12-08 | 2014-12-11 |  |  |  |  | 280h |
| 78 | 1.6.1 | **Interface PC (#1)** | 2d | 2014-12-08 | 2014-12-09 |  | 3d |  |  | 56h |
| 79 | 1.6.1.1 | Débogage | 2d | 2014-12-08 | 2014-12-09 | 66 | 3d |  | Vincent | 56h |

| ID | WBS | Task | Duration | Start | Finish | Predecessors | Total slack | Free slack | Constraint | Resources | Work |
| --- | --- | --- | --- | --- | --- | --- | --- | --- | --- | --- | --- |
| 80 | 1.6.2 | **Véhicule & station 1 (#2)** | 2d | 2014-12-08 | 2014-12-09 |  | 3d |  |  |  | 56h |
| 81 | 1.6.2.1 | Débogage | 2d | 2014-12-08 | 2014-12-09 | 71 | 3d |  |  | Louis-Normand | 56h |
| 82 | 1.6.3 | **Festo (#3)** | 2d | 2014-12-08 | 2014-12-09 |  | 3d |  |  |  | 56h |
| 83 | 1.6.3.1 | Débogage | 2d | 2014-12-08 | 2014-12-09 | 74 | 3d |  |  | Gabriel | 56h |
| 84 | 1.6.4 | **SOC8200 & PIC (#4)** | 2d | 2014-12-08 | 2014-12-09 |  | 3d |  |  |  | 56h |
| 85 | 1.6.4.1 | Débogage | 2d | 2014-12-08 | 2014-12-09 | 76 | 3d |  |  | Hicham | 56h |
| 86 | 1.6.5 | Rédaction du rapport | 1d | 2014-12-10 | 2014-12-10 | 2 | 0.43d | 0d | start no earlier than 2014-12-10 | Louis-Normand; Gabriel; Hicham; Vincent | 28h |
| 87 | 1.6.6 | Présentation du rapport | 1d | 2014-12-10 | 2014-12-11 | 86 | 0.43d |  | finish no earlier than 2014-12-08 | Louis-Normand; Gabriel; Hicham; Vincent | 28h |
